# mmsproject

Schedule from MS Project, 2011-09-15 to 2012-02-16, A marks actual dates.

## Calendars

- Standard: Mon-Fri 08:00-12:00, 13:00-17:00; Sat-Sun off. Exceptions (off unless hours are given): 2011-09-17 to 2012-03-31 08:00-12:00, 13:00-17:00 (recurring).

## Resources

| Resource |
| --- |
| All Team |
| BaoNDD |
| TuTM |
| TuanVA |
| HuyNVK |
| DungDV |
| DucNH |
| HienTT |
| HuyDV |
| LinhTA |
| ThanhCV |
| ThaoNX |
| ThiVT |
| KhoaVT |
| ThaoNX + DungDV + ThiVT + KhoaVT |
| ThanhCV + DucNH + LinhTA + HuyDV |
| TuanVA + BaoNDD + TuTM |

## Schedule

| ID | WBS | Task | Duration | Start | Finish | Complete | Remaining | Total slack | Constraint | Resources | Work | Actual work |
| --- | --- | --- | --- | --- | --- | --- | --- | --- | --- | --- | --- | --- |
| 1 | 1 | **C&C Project** | 133d | 2011-09-15 A | 2012-02-16 | 69% | 41.7d | 0d |  |  | 643h | 367h |
| 2 | 1.1 | **Prepare** | 17d | 2011-09-15 A | 2011-10-04 A | 100% |  |  |  |  | 187h | 187h |
| 3 | 1.1.1 | Meeting for establishing group | 0.25d | 2011-09-15 A | 2011-09-15 A | 100% |  |  |  | All Team | 2h | 2h |
| 4 | 1.1.2 | **Prepare documents, templates, development evironment** | 1d | 2011-09-15 A | 2011-09-15 A | 100% |  |  |  |  | 5h | 5h |
| 5 | 1.1.2.1 | Biên bản thành lập nhóm.docx | 0.5d | 2011-09-15 A | 2011-09-15 A | 100% |  |  |  | BaoNDD [25%] | 1h | 1h |
| 6 | 1.1.2.2 | Template for meeting minute | 0.5d | 2011-09-15 A | 2011-09-15 A | 100% |  |  |  | TuTM [25%] | 1h | 1h |
| 7 | 1.1.2.3 | Bảng đánh giá công việc.docx | 0.5d | 2011-09-15 A | 2011-09-15 A | 100% |  |  |  | TuanVA [25%] | 1h | 1h |
| 8 | 1.1.2.4 | Template MemberTracking.xls + Template ScreenDesign.xls + Template DefectLog.xls + Set up project on Google Code | 1d | 2011-09-15 A | 2011-09-15 A | 100% |  |  |  | HuyNVK [25%] | 2h | 2h |
| 9 | 1.1.3 | **Study** | 17d | 2011-09-15 A | 2011-10-04 A | 100% |  |  |  |  | 180h | 180h |
| 10 | 1.1.3.1 | **HTML/CSS** | 3d | 2011-09-16 A | 2011-09-19 A | 100% |  |  |  |  | 4h | 4h |
| 11 | 1.1.3.1.1 | Demo design site by HTML/CSS | 3d | 2011-09-16 A | 2011-09-19 A | 100% |  |  | start no earlier than 2011-09-16 | HuyNVK [16.7%] | 4h | 4h |
| 12 | 1.1.3.2 | **PHP** | 7d | 2011-09-15 A | 2011-09-22 A | 100% |  |  |  |  | 58h | 58h |
| 13 | 1.1.3.2.1 | Demo login by PHP, MySQL | 3d | 2011-09-19 A | 2011-09-21 A | 100% |  |  | start no earlier than 2011-09-19 | DungDV [25%] | 6h | 6h |
| 14 | 1.1.3.2.2 | Demo login by PHP, MySQL | 3d | 2011-09-19 A | 2011-09-21 A | 100% |  |  | start no earlier than 2011-10-19 | DucNH [25%] | 6h | 6h |
| 15 | 1.1.3.2.3 | Demo login by PHP, MySQL | 3d | 2011-09-19 A | 2011-09-21 A | 100% |  |  | start no earlier than 2011-09-19 | HienTT [25%] | 6h | 6h |
| 16 | 1.1.3.2.4 | Demo login by PHP, MySQL | 3d | 2011-09-19 A | 2011-09-21 A | 100% |  |  | start no earlier than 2011-09-19 | HuyDV [25%] | 6h | 6h |
| 17 | 1.1.3.2.5 | Demo login by PHP, MySQL | 3d | 2011-09-19 A | 2011-09-21 A | 100% |  |  | start no earlier than 2011-09-19 | HuyNVK [25%] | 6h | 6h |
| 18 | 1.1.3.2.6 | Demo login by PHP, MySQL | 3d | 2011-09-19 A | 2011-09-21 A | 100% |  |  | start no earlier than 2011-09-19 | LinhTA [25%] | 6h | 6h |
| 19 | 1.1.3.2.7 | Demo login by PHP, MySQL | 3d | 2011-09-19 A | 2011-09-21 A | 100% |  |  | start no earlier than 2011-09-19 | ThanhCV [25%] | 6h | 6h |
| 20 | 1.1.3.2.8 | Demo login by PHP, MySQL | 3d | 2011-09-19 A | 2011-09-22 A | 100% |  |  | start no earlier than 2011-09-19 | ThaoNX [25%] | 6h | 6h |
| 21 | 1.1.3.2.9 | Demo login by PHP, MySQL | 1d | 2011-09-15 A | 2011-09-15 A | 100% |  |  |  | ThiVT [25%] | 2h | 2h |
| 22 | 1.1.3.2.10 | Demo login by PHP, MySQL | 4d | 2011-09-15 A | 2011-09-19 A | 100% |  |  |  | TuTM [18.8%] | 6h | 6h |
| 23 | 1.1.3.2.11 | Demo login by PHP, MySQL | 1d | 2011-09-15 A | 2011-09-15 A | 100% |  |  |  | KhoaVT [25%] | 2h | 2h |
| 24 | 1.1.3.3 | **Zend Framework** | 13d | 2011-09-15 A | 2011-09-29 A | 100% |  |  |  |  | 74h | 74h |
| 25 | 1.1.3.3.1 | MVC model and Zend Framework introduction | 2d | 2011-09-15 A | 2011-09-16 A | 100% |  |  |  | ThaoNX [25%] | 4h | 4h |
| 26 | 1.1.3.3.2 | Set up muti-module project by Zend Studio | 1d | 2011-09-15 A | 2011-09-15 A | 100% |  |  |  | HuyDV [25%] | 2h | 2h |
| 27 | 1.1.3.3.3 | Demo login by Zend Framework | 3d | 2011-09-26 A | 2011-09-28 A | 100% |  |  | start no earlier than 2011-10-26 | DungDV [25%] | 6h | 6h |
| 28 | 1.1.3.3.4 | Demo login by Zend Framework | 3d | 2011-09-26 A | 2011-09-28 A | 100% |  |  | start no earlier than 2011-10-26 | DucNH [25%] | 6h | 6h |
| 29 | 1.1.3.3.5 | Demo login by Zend Framework | 3d | 2011-09-26 A | 2011-09-28 A | 100% |  |  | start no earlier than 2011-10-26 | HienTT [25%] | 6h | 6h |
| 30 | 1.1.3.3.6 | Demo login by Zend Framework | 3d | 2011-09-26 A | 2011-09-28 A | 100% |  |  | start no earlier than 2011-10-26 | HuyNVK [25%] | 6h | 6h |
| 31 | 1.1.3.3.7 | Demo login by Zend Framework | 3d | 2011-09-26 A | 2011-09-28 A | 100% |  |  | start no earlier than 2011-10-26 | LinhTA [25%] | 6h | 6h |
| 32 | 1.1.3.3.8 | Demo login by Zend Framework | 3d | 2011-09-26 A | 2011-09-28 A | 100% |  |  | start no earlier than 2011-10-26 | ThanhCV [25%] | 6h | 6h |
| 33 | 1.1.3.3.9 | Demo login by Zend Framework | 3d | 2011-09-26 A | 2011-09-28 A | 100% |  |  | start no earlier than 2011-10-26 | ThaoNX [25%] | 6h | 6h |
| 34 | 1.1.3.3.10 | Demo login by Zend Framework | 3d | 2011-09-26 A | 2011-09-28 A | 100% |  |  | start no earlier than 2011-10-26 | ThiVT [25%] | 6h | 6h |
| 35 | 1.1.3.3.11 | Demo login by Zend Framework | 3d | 2011-09-26 A | 2011-09-28 A | 100% |  |  | start no earlier than 2011-10-26 | TuTM [25%] | 6h | 6h |
| 36 | 1.1.3.3.12 | Demo login by Zend Framework | 3d | 2011-09-26 A | 2011-09-28 A | 100% |  |  | start no earlier than 2011-10-26 | KhoaVT [25%] | 6h | 6h |
| 37 | 1.1.3.3.13 | Demo simple CMS by Zend Framework | 4d | 2011-09-26 A | 2011-09-29 A | 100% |  |  | start no earlier than 2011-09-26 | HuyDV [25%] | 8h | 8h |

| ID | WBS | Task | Duration | Start | Finish | Complete | Remaining | Total slack | Constraint | Resources | Work | Actual work |
| --- | --- | --- | --- | --- | --- | --- | --- | --- | --- | --- | --- | --- |
| 38 | 1.1.3.4 | **How to build CMS Project** | 2d | 2011-10-03 A | 2011-10-04 A | 100% |  |  |  |  | 44h | 44h |
| 39 | 1.1.3.4.1 | Study book "How to build a full CMS project" and give idea | 2d | 2011-10-03 A | 2011-10-04 A | 100% |  |  | start no earlier than 2011-10-03 | DungDV [25%] | 4h | 4h |
| 40 | 1.1.3.4.2 | Study book "How to build a full CMS project" and give idea | 2d | 2011-10-03 A | 2011-10-04 A | 100% |  |  | start no earlier than 2011-10-03 | DucNH [25%] | 4h | 4h |
| 41 | 1.1.3.4.3 | Study book "How to build a full CMS project" and give idea | 2d | 2011-10-03 A | 2011-10-04 A | 100% |  |  | start no earlier than 2011-10-03 | HienTT [25%] | 4h | 4h |
| 42 | 1.1.3.4.4 | Study book "How to build a full CMS project" and give idea | 2d | 2011-10-03 A | 2011-10-04 A | 100% |  |  | start no earlier than 2011-10-03 | HuyNVK [25%] | 4h | 4h |
| 43 | 1.1.3.4.5 | Study book "How to build a full CMS project" and give idea | 2d | 2011-10-03 A | 2011-10-04 A | 100% |  |  | start no earlier than 2011-10-03 | LinhTA [25%] | 4h | 4h |
| 44 | 1.1.3.4.6 | Study book "How to build a full CMS project" and give idea | 2d | 2011-10-03 A | 2011-10-04 A | 100% |  |  | start no earlier than 2011-10-03 | ThanhCV [25%] | 4h | 4h |
| 45 | 1.1.3.4.7 | Study book "How to build a full CMS project" and give idea | 2d | 2011-10-03 A | 2011-10-04 A | 100% |  |  | start no earlier than 2011-10-03 | ThaoNX [25%] | 4h | 4h |
| 46 | 1.1.3.4.8 | Study book "How to build a full CMS project" and give idea | 2d | 2011-10-03 A | 2011-10-04 A | 100% |  |  | start no earlier than 2011-10-03 | ThiVT [25%] | 4h | 4h |
| 47 | 1.1.3.4.9 | Study book "How to build a full CMS project" and give idea | 2d | 2011-10-03 A | 2011-10-04 A | 100% |  |  | start no earlier than 2011-10-03 | TuTM [25%] | 4h | 4h |
| 48 | 1.1.3.4.10 | Study book "How to build a full CMS project" and give idea | 2d | 2011-10-03 A | 2011-10-04 A | 100% |  |  | start no earlier than 2011-10-03 | KhoaVT [25%] | 4h | 4h |
| 49 | 1.1.3.4.11 | Study book "How to build a full CMS project" and give idea | 2d | 2011-10-03 A | 2011-10-04 A | 100% |  |  | start no earlier than 2011-10-03 | HuyDV [25%] | 4h | 4h |
| 50 | 1.2 | **Analysis and Requirement** | 1d | 2011-10-06 | 2011-10-06 |  |  | 114d |  |  | 2h |  |
| 51 | 1.2.1 | Review Software Specification | 1d | 2011-10-06 | 2011-10-06 |  |  | 20d | start no earlier than 2011-10-06 | All Team [25%] | 2h |  |
| 52 | 1.3 | **Design** | 34d | 2011-09-15 A | 2011-10-24 | 98% | 0.76d | 99d |  |  | 190h | 180h |
| 53 | 1.3.1 | **Screen Component Design** | 20d | 2011-09-15 A | 2011-10-07 A | 100% |  |  |  |  | 44h | 44h |
| 54 | 1.3.1.1 | Menu Manager | 2d | 2011-10-06 A | 2011-10-07 A | 100% |  |  | start no earlier than 2011-10-06 | ThiVT [25%] | 4h | 4h |
| 55 | 1.3.1.2 | Configuration | 2d | 2011-10-06 A | 2011-10-07 A | 100% |  |  | start no earlier than 2011-10-06 | ThaoNX [25%] | 4h | 4h |
| 56 | 1.3.1.3 | **Content Manager** | 20d | 2011-09-15 A | 2011-10-07 A | 100% |  |  |  |  | 12h | 12h |
| 57 | 1.3.1.3.1 | Acticle Manager + Copy Acticle + Move Acticle + Global Configuration Pop-up Window | 2d | 2011-09-15 A | 2011-09-16 A | 100% |  |  |  | DucNH [25%] | 4h | 4h |
| 58 | 1.3.1.3.2 | Section Manager + Category Manager + Front Page Manager | 2d | 2011-10-06 A | 2011-10-07 A | 100% |  |  | start no earlier than 2011-10-06 | DungDV [25%] | 4h | 4h |
| 59 | 1.3.1.3.3 | Section Edit + Category Edit + Acticle Edit | 2d | 2011-10-06 A | 2011-10-07 A | 100% |  |  | start no earlier than 2011-10-06 | TuTM [25%] | 4h | 4h |
| 60 | 1.3.1.4 | **User Manager** | 2d | 2011-10-06 A | 2011-10-07 A | 100% |  |  |  |  | 8h | 8h |
| 61 | 1.3.1.4.1 | User Manager | 2d | 2011-10-06 A | 2011-10-07 A | 100% |  |  | start no earlier than 2011-10-06 | KhoaVT [25%] | 4h | 4h |
| 62 | 1.3.1.4.2 | New User + Edit User | 2d | 2011-10-06 A | 2011-10-07 A | 100% |  |  | start no earlier than 2011-10-06 | ThanhCV [25%] | 4h | 4h |

| ID | WBS | Task | Duration | Start | Finish | Complete | Constraint | Resources | Work | Actual work |
| --- | --- | --- | --- | --- | --- | --- | --- | --- | --- | --- |
| 63 | 1.3.1.5 | **Media Manager** | 2d | 2011-10-06 A | 2011-10-07 A | 100% |  |  | 8h | 8h |
| 64 | 1.3.1.5.1 | Media Manager | 2d | 2011-10-06 A | 2011-10-07 A | 100% | start no earlier than 2011-10-06 | HienTT [25%] | 4h | 4h |
| 65 | 1.3.1.5.2 | Media Option | 2d | 2011-10-06 A | 2011-10-07 A | 100% | start no earlier than 2011-10-06 | HuyNVK [25%] | 4h | 4h |
| 66 | 1.3.1.6 | Login + Language Manager | 2d | 2011-10-06 A | 2011-10-07 A | 100% | start no earlier than 2011-10-06 | ThiVT [25%] | 4h | 4h |
| 67 | 1.3.1.7 | Layout and navigation | 2d | 2011-10-06 A | 2011-10-07 A | 100% | start no earlier than 2011-10-06 | HuyDV [25%] | 4h | 4h |
| 68 | 1.3.2 | **Re-define Component using Screen Design Template** | 1d | 2011-10-14 A | 2011-10-14 A | 100% |  |  | 18h | 18h |
| 69 | 1.3.2.1 | Menu Manager | 1d | 2011-10-14 A | 2011-10-14 A | 100% | start no earlier than 2011-10-14 | ThiVT [25%] | 2h | 2h |
| 70 | 1.3.2.2 | Configuration | 1d | 2011-10-14 A | 2011-10-14 A | 100% | start no earlier than 2011-10-06 | ThaoNX [25%] | 2h | 2h |
| 71 | 1.3.2.3 | **Content Manager** | 1d | 2011-10-14 A | 2011-10-14 A | 100% |  |  | 6h | 6h |
| 72 | 1.3.2.3.1 | Acticle Manager + Copy Acticle + Move Acticle + Global Configuration Pop-up Window | 1d | 2011-10-14 A | 2011-10-14 A | 100% |  | DucNH [25%] | 2h | 2h |
| 73 | 1.3.2.3.2 | Section Manager + Category Manager + Front Page Manager | 1d | 2011-10-14 A | 2011-10-14 A | 100% | start no earlier than 2011-10-06 | DungDV [25%] | 2h | 2h |
| 74 | 1.3.2.3.3 | Section Edit + Category Edit + Acticle Edit | 1d | 2011-10-14 A | 2011-10-14 A | 100% | start no earlier than 2011-10-06 | TuTM [25%] | 2h | 2h |
| 75 | 1.3.2.4 | **User Manager** | 1d | 2011-10-14 A | 2011-10-14 A | 100% |  |  | 4h | 4h |
| 76 | 1.3.2.4.1 | User Manager | 1d | 2011-10-14 A | 2011-10-14 A | 100% | start no earlier than 2011-10-06 | KhoaVT [25%] | 2h | 2h |
| 77 | 1.3.2.4.2 | New User + Edit User | 1d | 2011-10-14 A | 2011-10-14 A | 100% | start no earlier than 2011-10-06 | ThanhCV [25%] | 2h | 2h |
| 78 | 1.3.2.5 | Login + Language Manager | 1d | 2011-10-14 A | 2011-10-14 A | 100% | start no earlier than 2011-10-06 | ThiVT [25%] | 2h | 2h |
| 79 | 1.3.2.6 | Layout and navigation | 1d | 2011-10-14 A | 2011-10-14 A | 100% | start no earlier than 2011-10-06 | HuyDV [25%] | 2h | 2h |
| 80 | 1.3.3 | **Study PHP, MySQL and Zend Frame Work** | 3d | 2011-10-14 A | 2011-10-17 A | 100% |  |  | 12h | 12h |
| 81 | 1.3.3.1 | Demo login using PHP, MySQL | 2d | 2011-10-14 A | 2011-10-15 A | 100% | start no earlier than 2011-10-14 | BaoNDD [25%] | 4h | 4h |
| 82 | 1.3.3.2 | Demo login using PHP, MySQL | 2d | 2011-10-14 A | 2011-10-15 A | 100% | start no earlier than 2011-10-14 | TuanVA [25%] | 4h | 4h |
| 83 | 1.3.3.3 | Study Book "How to build a full CMS" and give idea. | 1d | 2011-10-17 A | 2011-10-17 A | 100% | start no earlier than 2011-10-17 | BaoNDD [25%] | 2h | 2h |
| 84 | 1.3.3.4 | Study Book "How to build a full CMS" and give idea. | 1d | 2011-10-17 A | 2011-10-17 A | 100% | start no earlier than 2011-10-17 | TuanVA [25%] | 2h | 2h |
| 85 | 1.3.4 | **Screen Prototype** | 20d | 2011-09-15 A | 2011-10-07 A | 100% |  |  | 44h | 44h |
| 86 | 1.3.4.1 | Menu Manager | 2d | 2011-10-06 A | 2011-10-07 A | 100% | start no earlier than 2011-10-06 | ThiVT [25%] | 4h | 4h |
| 87 | 1.3.4.2 | Configuration | 2d | 2011-10-06 A | 2011-10-07 A | 100% | start no earlier than 2011-10-06 | ThaoNX [25%] | 4h | 4h |

| ID | WBS | Task | Duration | Start | Finish | Complete | Constraint | Resources | Work | Actual work |
| --- | --- | --- | --- | --- | --- | --- | --- | --- | --- | --- |
| 88 | 1.3.4.3 | **Content Manager** | 20d | 2011-09-15 A | 2011-10-07 A | 100% |  |  | 12h | 12h |
| 89 | 1.3.4.3.1 | Acticle Manager + Copy Acticle + Move Acticle + Global Configuration Pop-up Window | 2d | 2011-09-15 A | 2011-09-16 A | 100% |  | DucNH [25%] | 4h | 4h |
| 90 | 1.3.4.3.2 | Section Manager + Category Manager + Front Page Manager | 2d | 2011-10-06 A | 2011-10-07 A | 100% | start no earlier than 2011-10-06 | DungDV [25%] | 4h | 4h |
| 91 | 1.3.4.3.3 | Section Edit + Category Edit + Acticle Edit | 2d | 2011-10-06 A | 2011-10-07 A | 100% | start no earlier than 2011-10-06 | TuTM [25%] | 4h | 4h |
| 92 | 1.3.4.4 | **User Manager** | 2d | 2011-10-06 A | 2011-10-07 A | 100% |  |  | 8h | 8h |
| 93 | 1.3.4.4.1 | User Manager | 2d | 2011-10-06 A | 2011-10-07 A | 100% | start no earlier than 2011-10-06 | KhoaVT [25%] | 4h | 4h |
| 94 | 1.3.4.4.2 | New User + Edit User | 2d | 2011-10-06 A | 2011-10-07 A | 100% | start no earlier than 2011-10-06 | ThanhCV [25%] | 4h | 4h |
| 95 | 1.3.4.5 | **Media Manager** | 2d | 2011-10-06 A | 2011-10-07 A | 100% |  |  | 8h | 8h |
| 96 | 1.3.4.5.1 | Media Manager | 2d | 2011-10-06 A | 2011-10-07 A | 100% | start no earlier than 2011-10-06 | HienTT [25%] | 4h | 4h |
| 97 | 1.3.4.5.2 | Media Option | 2d | 2011-10-06 A | 2011-10-07 A | 100% | start no earlier than 2011-10-06 | HuyNVK [25%] | 4h | 4h |
| 98 | 1.3.4.6 | Login + Language Manager | 2d | 2011-10-06 A | 2011-10-07 A | 100% | start no earlier than 2011-10-06 | ThiVT [25%] | 4h | 4h |
| 99 | 1.3.4.7 | Layout and navigation | 2d | 2011-10-06 A | 2011-10-07 A | 100% | start no earlier than 2011-10-06 | HuyDV [25%] | 4h | 4h |
| 100 | 1.3.5 | **Mapping screen items to Database** | 19d | 2011-09-15 A | 2011-10-06 A | 100% |  |  | 22h | 22h |
| 101 | 1.3.5.1 | Menu Manager | 1d | 2011-10-06 A | 2011-10-06 A | 100% | start no earlier than 2011-10-06 | ThiVT [25%] | 2h | 2h |
| 102 | 1.3.5.2 | Configuration | 1d | 2011-10-06 A | 2011-10-06 A | 100% | start no earlier than 2011-10-06 | ThaoNX [25%] | 2h | 2h |
| 103 | 1.3.5.3 | **Content Manager** | 19d | 2011-09-15 A | 2011-10-06 A | 100% |  |  | 6h | 6h |
| 104 | 1.3.5.3.1 | Acticle Manager + Copy Acticle + Move Acticle + Global Configuration Pop-up Window | 1d | 2011-09-15 A | 2011-09-15 A | 100% |  | DucNH [25%] | 2h | 2h |
| 105 | 1.3.5.3.2 | Section Manager + Category Manager + Front Page Manager | 1d | 2011-10-06 A | 2011-10-06 A | 100% | start no earlier than 2011-10-06 | DungDV [25%] | 2h | 2h |
| 106 | 1.3.5.3.3 | Section Edit + Category Edit + Acticle Edit | 1d | 2011-10-06 A | 2011-10-06 A | 100% | start no earlier than 2011-10-06 | TuTM [25%] | 2h | 2h |
| 107 | 1.3.5.4 | **User Manager** | 1d | 2011-10-06 A | 2011-10-06 A | 100% |  |  | 4h | 4h |
| 108 | 1.3.5.4.1 | User Manager | 1d | 2011-10-06 A | 2011-10-06 A | 100% | start no earlier than 2011-10-06 | KhoaVT [25%] | 2h | 2h |
| 109 | 1.3.5.4.2 | New User + Edit User | 1d | 2011-10-06 A | 2011-10-06 A | 100% | start no earlier than 2011-10-06 | ThanhCV [25%] | 2h | 2h |
| 110 | 1.3.5.5 | **Media Manager** | 1d | 2011-10-06 A | 2011-10-06 A | 100% |  |  | 4h | 4h |
| 111 | 1.3.5.5.1 | Media Manager | 1d | 2011-10-06 A | 2011-10-06 A | 100% | start no earlier than 2011-10-06 | TuanVA [25%] | 2h | 2h |
| 112 | 1.3.5.5.2 | Media Option | 1d | 2011-10-06 A | 2011-10-06 A | 100% | start no earlier than 2011-10-06 | BaoNDD [25%] | 2h | 2h |
| 113 | 1.3.5.6 | Login + Language Manager | 1d | 2011-10-06 A | 2011-10-06 A | 100% | start no earlier than 2011-10-06 | ThiVT [25%] | 2h | 2h |
| 114 | 1.3.5.7 | Layout and navigation | 1d | 2011-10-06 A | 2011-10-06 A | 100% | start no earlier than 2011-10-06 | HuyDV [25%] | 2h | 2h |

| ID | WBS | Task | Duration | Start | Finish | Complete | Remaining | Total slack | Constraint | Resources | Work | Actual work |
| --- | --- | --- | --- | --- | --- | --- | --- | --- | --- | --- | --- | --- |
| 115 | 1.3.6 | **Events** | 19d | 2011-09-15 A | 2011-10-06 A | 100% |  |  |  |  | 22h | 22h |
| 116 | 1.3.6.1 | Menu Manager | 1d | 2011-10-06 A | 2011-10-06 A | 100% |  |  | start no earlier than 2011-10-06 | ThiVT [25%] | 2h | 2h |
| 117 | 1.3.6.2 | Configuration | 1d | 2011-10-06 A | 2011-10-06 A | 100% |  |  | start no earlier than 2011-10-06 | ThaoNX [25%] | 2h | 2h |
| 118 | 1.3.6.3 | **Content Manager** | 19d | 2011-09-15 A | 2011-10-06 A | 100% |  |  |  |  | 6h | 6h |
| 119 | 1.3.6.3.1 | Acticle Manager + Copy Acticle + Move Acticle + Global Configuration Pop-up Window | 1d | 2011-09-15 A | 2011-09-15 A | 100% |  |  |  | DucNH [25%] | 2h | 2h |
| 120 | 1.3.6.3.2 | Section Manager + Category Manager + Front Page Manager | 1d | 2011-10-06 A | 2011-10-06 A | 100% |  |  | start no earlier than 2011-10-06 | DungDV [25%] | 2h | 2h |
| 121 | 1.3.6.3.3 | Section Edit + Category Edit + Acticle Edit | 1d | 2011-10-06 A | 2011-10-06 A | 100% |  |  | start no earlier than 2011-10-06 | TuTM [25%] | 2h | 2h |
| 122 | 1.3.6.4 | **User Manager** | 1d | 2011-10-06 A | 2011-10-06 A | 100% |  |  |  |  | 4h | 4h |
| 123 | 1.3.6.4.1 | User Manager | 1d | 2011-10-06 A | 2011-10-06 A | 100% |  |  | start no earlier than 2011-10-06 | KhoaVT [25%] | 2h | 2h |
| 124 | 1.3.6.4.2 | New User + Edit User | 1d | 2011-10-06 A | 2011-10-06 A | 100% |  |  | start no earlier than 2011-10-06 | ThanhCV [25%] | 2h | 2h |
| 125 | 1.3.6.5 | **Media Manager** | 1d | 2011-10-06 A | 2011-10-06 A | 100% |  |  |  |  | 4h | 4h |
| 126 | 1.3.6.5.1 | Media Manager | 1d | 2011-10-06 A | 2011-10-06 A | 100% |  |  | start no earlier than 2011-10-06 | TuanVA [25%] | 2h | 2h |
| 127 | 1.3.6.5.2 | Media Option | 1d | 2011-10-06 A | 2011-10-06 A | 100% |  |  | start no earlier than 2011-10-06 | BaoNDD [25%] | 2h | 2h |
| 128 | 1.3.6.6 | Login + Language Manager | 1d | 2011-10-06 A | 2011-10-06 A | 100% |  |  | start no earlier than 2011-10-06 | ThiVT [25%] | 2h | 2h |
| 129 | 1.3.6.7 | Layout and navigation | 1d | 2011-10-06 A | 2011-10-06 A | 100% |  |  | start no earlier than 2011-10-06 | HuyDV [25%] | 2h | 2h |
| 130 | 1.3.7 | **Review Screen Detailed Design** | 2d | 2011-10-20 A | 2011-10-21 | 99% | 0d | 0d |  |  | 24h | 18h |
| 131 | 1.3.7.1 | **Global Config + Menu Manager + User Manager + Content Manager** | 2d | 2011-10-20 A | 2011-10-21 | 99% | 0d | 0d |  | ThaoNX + DungDV + ThiVT + KhoaVT [25%] | 8h | 6h |
| 132 | 1.3.7.1.1 | Make Review Schedule | 1d | 2011-10-20 A | 2011-10-20 A | 100% |  |  | start no earlier than 2011-10-20 | ThaoNX + DungDV + ThiVT + KhoaVT [25%] | 2h | 2h |
| 133 | 1.3.7.1.2 | Do review, write log to DefectLog | 1d | 2011-10-21 A | 2011-10-21 A | 100% |  |  | start no earlier than 2011-10-20 | ThaoNX + DungDV + ThiVT + KhoaVT [25%] | 2h | 2h |
| 134 | 1.3.7.2 | **Acticle Manager + New & Edit User + Language Manager + Login** | 2d | 2011-10-20 A | 2011-10-21 | 99% | 0d | 0d |  | ThanhCV + DucNH + LinhTA + HuyDV [25%] | 8h | 6h |
| 135 | 1.3.7.2.1 | Make Review Schedule | 1d | 2011-10-20 A | 2011-10-20 A | 100% |  |  | start no earlier than 2011-10-20 | ThanhCV + DucNH + LinhTA + HuyDV [25%] | 2h | 2h |
| 136 | 1.3.7.2.2 | Do review, write log to DefectLog | 1d | 2011-10-21 A | 2011-10-21 A | 100% |  |  | start no earlier than 2011-10-20 | ThanhCV + DucNH + LinhTA + HuyDV [25%] | 2h | 2h |
| 137 | 1.3.7.3 | **Media Manager + Media Option + Section Edit + Acticle Edit + Category Edit** | 2d | 2011-10-20 A | 2011-10-21 | 99% | 0d | 0d |  | TuanVA + BaoNDD + TuTM [25%] | 8h | 6h |
| 138 | 1.3.7.3.1 | Make Review Schedule | 1d | 2011-10-20 A | 2011-10-20 A | 100% |  |  | start no earlier than 2011-10-20 | TuanVA + BaoNDD + TuTM [25%] | 2h | 2h |
| 139 | 1.3.7.3.2 | Do review, write log to DefectLog | 1d | 2011-10-21 A | 2011-10-21 A | 100% |  |  | start no earlier than 2011-10-20 | TuanVA + BaoNDD + TuTM [25%] | 2h | 2h |

| ID | WBS | Task | Duration | Start | Finish | Predecessors | Total slack | Free slack | Constraint | Resources | Work |
| --- | --- | --- | --- | --- | --- | --- | --- | --- | --- | --- | --- |
| 140 | 1.3.8 | **Screen Transition** | 1d | 2011-10-24 | 2011-10-24 |  | 99d |  |  |  | 4h |
| 141 | 1.3.8.1 | ContentManager + GlobalConfiguration | 1d | 2011-10-24 | 2011-10-24 |  | 99d |  | start no earlier than 2011-10-24 | ThaoNX [25%] | 2h |
| 142 | 1.3.8.2 | MenuManager + MediaManager + UserManager | 1d | 2011-10-24 | 2011-10-24 |  | 99d |  | start no earlier than 2011-10-24 | LinhTA [25%] | 2h |
| 143 | 1.4 | **Development** | 6d | 2011-10-24 | 2011-10-29 |  | 94d |  |  |  | 264h |
| 144 | 1.4.1 | **Code Screen Interface using Zend Form** | 6d | 2011-10-24 | 2011-10-29 |  | 94d |  |  |  | 264h |
| 145 | 1.4.1.1 | **MediaOption + NewMenu** | 6d | 2011-10-24 | 2011-10-29 |  | 94d |  |  | BaoNDD [25%] | 24h |
| 146 | 1.4.1.1.1 | Study Zend From and Code the first screen | 3d | 2011-10-24 | 2011-10-26 |  | 94d | 0d | start no earlier than 2011-10-24 | BaoNDD [25%] | 6h |
| 147 | 1.4.1.1.2 | Finish all remaining screens | 3d | 2011-10-27 | 2011-10-29 | 146 | 92d |  | finish no earlier than 2011-10-24 | BaoNDD [25%] | 6h |
| 148 | 1.4.1.2 | **SectionManager + CategoryManager + FrontPageManager + ActicleEdit** | 6d | 2011-10-24 | 2011-10-29 |  | 94d |  |  | DungDV [25%] | 24h |
| 149 | 1.4.1.2.1 | Study Zend From and Code the first screen | 3d | 2011-10-24 | 2011-10-26 |  | 94d | 0d | start no earlier than 2011-10-24 | DungDV [25%] | 6h |
| 150 | 1.4.1.2.2 | Finish all remaining screens | 3d | 2011-10-27 | 2011-10-29 | 149 | 92d |  | finish no earlier than 2011-10-24 | DungDV [25%] | 6h |
| 151 | 1.4.1.3 | **ActicleManager + ActicleCopy + ActicleGlobalConfig** | 6d | 2011-10-24 | 2011-10-29 |  | 94d |  |  | DucNH [25%] | 24h |
| 152 | 1.4.1.3.1 | Study Zend From and Code the first screen | 3d | 2011-10-24 | 2011-10-26 |  | 94d | 0d | start no earlier than 2011-10-24 | DucNH [25%] | 6h |
| 153 | 1.4.1.3.2 | Finish all remaining screens | 3d | 2011-10-27 | 2011-10-29 | 152 | 92d |  | finish no earlier than 2011-10-24 | DucNH [25%] | 6h |
| 154 | 1.4.1.4 | **Layout for admin module** | 6d | 2011-10-24 | 2011-10-29 |  | 94d |  |  | HuyDV [25%] | 24h |
| 155 | 1.4.1.4.1 | Study Zend From and Code the first screen | 3d | 2011-10-24 | 2011-10-26 |  | 94d | 0d | start no earlier than 2011-10-24 | HuyDV [25%] | 6h |
| 156 | 1.4.1.4.2 | Finish all remaining screens | 3d | 2011-10-27 | 2011-10-29 | 155 | 92d |  | finish no earlier than 2011-10-24 | HuyDV [25%] | 6h |
| 157 | 1.4.1.5 | **LanguageManager + Login** | 6d | 2011-10-24 | 2011-10-29 |  | 94d |  |  | LinhTA [25%] | 24h |
| 158 | 1.4.1.5.1 | Study Zend From and Code the first screen | 3d | 2011-10-24 | 2011-10-26 |  | 94d | 0d | start no earlier than 2011-10-24 | LinhTA [25%] | 6h |
| 159 | 1.4.1.5.2 | Finish all remaining screens | 3d | 2011-10-27 | 2011-10-29 | 158 | 92d |  | finish no earlier than 2011-10-24 | LinhTA [25%] | 6h |
| 160 | 1.4.1.6 | **New&EditUser + EditMenuItem** | 6d | 2011-10-24 | 2011-10-29 |  | 94d |  |  | ThanhCV [25%] | 24h |
| 161 | 1.4.1.6.1 | Study Zend From and Code the first screen | 3d | 2011-10-24 | 2011-10-26 |  | 94d | 0d | start no earlier than 2011-10-24 | ThanhCV [25%] | 6h |
| 162 | 1.4.1.6.2 | Finish all remaining screens | 3d | 2011-10-27 | 2011-10-29 | 161 | 92d |  | finish no earlier than 2011-10-24 | ThanhCV [25%] | 6h |
| 163 | 1.4.1.7 | **Global Configuration** | 6d | 2011-10-24 | 2011-10-29 |  | 94d |  |  | ThaoNX [25%] | 24h |
| 164 | 1.4.1.7.1 | Study Zend From and Code the first screen | 3d | 2011-10-24 | 2011-10-26 |  | 94d | 0d | start no earlier than 2011-10-24 | ThaoNX [25%] | 6h |
| 165 | 1.4.1.7.2 | Finish all remaining screens | 3d | 2011-10-27 | 2011-10-29 | 164 | 92d |  | finish no earlier than 2011-10-24 | ThaoNX [25%] | 6h |

| ID | WBS | Task | Duration | Start | Finish | Predecessors | Total slack | Free slack | Constraint | Resources | Work |
| --- | --- | --- | --- | --- | --- | --- | --- | --- | --- | --- | --- |
| 166 | 1.4.1.8 | **MenuManager + MenuItemManager** | 6d | 2011-10-24 | 2011-10-29 |  | 94d |  |  | ThiVT [25%] | 24h |
| 167 | 1.4.1.8.1 | Study Zend From and Code the first screen | 3d | 2011-10-24 | 2011-10-26 |  | 94d | 0d | start no earlier than 2011-10-24 | ThiVT [25%] | 6h |
| 168 | 1.4.1.8.2 | Finish all remaining screens | 3d | 2011-10-27 | 2011-10-29 | 167 | 92d |  | finish no earlier than 2011-10-24 | ThiVT [25%] | 6h |
| 169 | 1.4.1.9 | **SectionEdit + ActicleEdit + MoveActicle** | 6d | 2011-10-24 | 2011-10-29 |  | 94d |  |  | TuTM [25%] | 24h |
| 170 | 1.4.1.9.1 | Study Zend From and Code the first screen | 3d | 2011-10-24 | 2011-10-26 |  | 94d | 0d | start no earlier than 2011-10-24 | TuTM [25%] | 6h |
| 171 | 1.4.1.9.2 | Finish all remaining screens | 3d | 2011-10-27 | 2011-10-29 | 170 | 92d |  | finish no earlier than 2011-10-24 | TuTM [25%] | 6h |
| 172 | 1.4.1.10 | **UserManager + NewMenuItem** | 6d | 2011-10-24 | 2011-10-29 |  | 94d |  |  | KhoaVT [25%] | 24h |
| 173 | 1.4.1.10.1 | Study Zend From and Code the first screen | 3d | 2011-10-24 | 2011-10-26 |  | 94d | 0d | start no earlier than 2011-10-24 | KhoaVT [25%] | 6h |
| 174 | 1.4.1.10.2 | Finish all remaining screens | 3d | 2011-10-27 | 2011-10-29 | 173 | 92d |  | finish no earlier than 2011-10-24 | KhoaVT [25%] | 6h |
| 175 | 1.4.1.11 | **MediaManager + CopyMenu + MoveMenu** | 6d | 2011-10-24 | 2011-10-29 |  | 94d |  |  | TuanVA [25%] | 24h |
| 176 | 1.4.1.11.1 | Study Zend From and Code the first screen | 3d | 2011-10-24 | 2011-10-26 |  | 94d | 0d | start no earlier than 2011-10-24 | TuanVA [25%] | 6h |
| 177 | 1.4.1.11.2 | Finish all remaining screens | 3d | 2011-10-27 | 2011-10-29 | 176 | 92d |  | finish no earlier than 2011-10-24 | TuanVA [25%] | 6h |
| 178 | 1.5 | Testing | 12d | 2012-02-01 | 2012-02-14 |  | 2d |  | start no earlier than 2012-02-01 |  |  |
| 179 | 1.6 | Documentation | 2d | 2012-02-15 | 2012-02-16 |  | 0d |  | start no earlier than 2012-02-15 |  |  |
